# Proyecto - Simulacion de choques

Schedule from MS Project, 2012-04-11 to 2012-10-31.

## Calendars

- Standard: Mon-Fri 08:00-12:00, 13:00-17:00; Sat-Sun off. Exceptions (off unless hours are given): 2012-05-19 08:00-12:00, 13:00-17:00, 2012-06-09 08:00-12:00, 13:00-17:00.
- Calendar 1: Mon-Sun 09:00-18:00.

## Schedule

| ID | WBS | Task | Duration | Start | Finish | Predecessors | Total slack | Free slack | Constraint | Calendar |
| --- | --- | --- | --- | --- | --- | --- | --- | --- | --- | --- |
| 1 | 1 | **Simulacion de choques** | 229.38d | 2012-04-11 | 2012-10-31 |  | 0d |  |  | Calendar 1 |
| 2 | 1.1 | **Investigacion** | 30.62d | 2012-04-11 | 2012-05-08 |  | 20.5d | 8.75d |  | Calendar 1 |
| 3 | 1.1.1 | Investigacion de motores Graficos | 7d | 2012-04-11 | 2012-04-17 |  | 23.12d | 0d | start no earlier than 2012-04-11 | Calendar 1 |
| 4 | 1.1.2 | Investigacion de algoritmos de deformación | 7d | 2012-04-17 | 2012-04-23 | 3 | 23.12d | 0d |  | Calendar 1 |
| 5 | 1.1.3 | Investigación de modelos matemáticos de deformación | 7d | 2012-04-23 | 2012-04-29 | 4 | 23.12d | 2.12d |  | Calendar 1 |
| 6 | 1.1.4 | Investigación del Finite Element Method | 7d | 2012-05-02 | 2012-05-08 | 5 | 20.5d |  | start no earlier than 2012-05-02 | Calendar 1 |
| 7 | 1.2 | **Iteracion 0** | 22.38d | 2012-05-19 | 2012-06-07 |  | 0d |  |  | Calendar 1 |
| 8 | 1.2.1 | Eleccion de la plataforma / Lenguaje a utilizar / Framework para la interfaz grafica | 2d | 2012-05-19 | 2012-05-20 | 2 | 8.38d | 0d | start no earlier than 2012-05-19 | Calendar 1 |
| 9 | 1.2.2 | Investigacion de software de modelado | 1d | 2012-05-20 | 2012-05-21 | 8 | 8.38d | 0d | finish no earlier than 2012-05-20 | Calendar 1 |
| 10 | 1.2.3 | Investigación de implementaciones de FEM (motor de procesamiento) | 4d | 2012-05-21 | 2012-05-25 | 9 | 8.38d | 5.25d | finish no earlier than 2012-05-20 | Calendar 1 |
| 11 | 1.2.4 | **Pruebas de concepto** | 6d | 2012-06-01 | 2012-06-06 |  | 0.12d | 0d |  | Calendar 1 |
| 12 | 1.2.4.1 | Pruebas de interefaz gráfica con el lenguaje / framework elegido | 6d | 2012-06-01 | 2012-06-06 | 10 | 0.12d |  | finish no earlier than 2012-06-06 | Calendar 1 |
| 13 | 1.2.4.2 | Pruebas de alguna implementacion FEM encontrada | 6d | 2012-06-01 | 2012-06-06 | 10 | 0.12d |  | finish no earlier than 2012-06-06 | Calendar 1 |
| 14 | 1.2.5 | Testeo | 1d | 2012-06-07 | 2012-06-07 | 11 | 0d |  |  |  |
| 15 | 1.3 | **Iteración 1** | 35.88d | 2012-06-08 | 2012-07-09 | 7 | 0d |  |  | Calendar 1 |
| 16 | 1.3.1 | Diseño de la interfaz gráfica de usuario para el preprocesamiento | 2d | 2012-06-08 | 2012-06-09 |  | 0d |  |  |  |
| 17 | 1.3.2 | Definicion de la interfaz de datos entre el motor y el preprocesamiento | 2d | 2012-06-11 | 2012-06-12 | 16 | 0d |  |  |  |
| 18 | 1.3.3 | **Desarrollo** | 16d | 2012-06-13 | 2012-07-04 |  | 0d |  |  |  |
| 19 | 1.3.3.1 | **Desarrollo del motor de FEM (Parte 1)** | 5d | 2012-06-13 | 2012-06-19 |  | 14d |  |  |  |
| 20 | 1.3.3.1.1 | Adaptacion de la biblioteca FEM a utilizar | 5d | 2012-06-13 | 2012-06-19 | 17 | 14d |  |  |  |
| 21 | 1.3.3.2 | **Desarrollo de interfaz gráfica de preprocesameinto (Parte 1)** | 16d | 2012-06-13 | 2012-07-04 | 17 | 0d |  |  |  |
| 22 | 1.3.3.2.1 | Creación de escenario 3D para carga de modelos | 7d | 2012-06-13 | 2012-06-21 |  | 0d |  |  |  |
| 23 | 1.3.3.2.2 | Creación de botones y listas de parámetros configurables | 7d | 2012-06-22 | 2012-07-02 | 22 | 0d |  |  |  |
| 24 | 1.3.3.2.3 | Creación de modelos de ejemplo | 1d | 2012-07-03 | 2012-07-03 | 23 | 0d |  |  |  |
| 25 | 1.3.3.2.4 | Carga de modelos | 1d | 2012-07-04 | 2012-07-04 | 24 | 0d |  |  |  |
| 26 | 1.3.4 | Testeo | 3d | 2012-07-05 | 2012-07-09 | 21 | 0d |  |  |  |

Notes:
- 22: Integrar el escenario 3d utilizando las pruebas de conceptos previas a la interfaz de usuario en si. Ver con que framwork hacer la interfaz de usuario.
- 23: Botones: Material, fuerza y posicion / Que se visualice en el modelo 3d / Comincar modelo 3d con panel de opciones

| ID | WBS | Task | Duration | Start | Finish | Predecessors | Total slack | Free slack | Calendar |
| --- | --- | --- | --- | --- | --- | --- | --- | --- | --- |
| 27 | 1.4 | **Iteración 2** | 27.38d | 2012-07-09 | 2012-08-03 | 15 | 0d |  | Calendar 1 |
| 28 | 1.4.1 | **Desarrollo del motor de FEM (Parte 2)** | 15d | 2012-07-09 | 2012-07-23 | 15 | 9d | 6d | Calendar 1 |
| 29 | 1.4.1.1 | Lectura y procesamiento de los modelos preprocesados desde la interfaz previamente definida | 15d | 2012-07-09 | 2012-07-23 |  | 9d |  | Calendar 1 |
| 30 | 1.4.2 | **Desarrollo de interfaz gráfica de preprocesamineto (Parte 2)** | 24d | 2012-07-09 | 2012-07-31 | 15 | 0d |  | Calendar 1 |
| 31 | 1.4.2.1 | Mejorar la visualizacion 3D | 8d | 2012-07-09 | 2012-07-16 |  | 0d |  | Calendar 1 |
| 32 | 1.4.2.2 | Expansión de parámetros configurables | 8d | 2012-07-17 | 2012-07-24 | 31 | 0d |  | Calendar 1 |
| 33 | 1.4.2.3 | Almacenamiento de modelos preprocesados | 8d | 2012-07-24 | 2012-07-31 | 32 | 0d |  | Calendar 1 |
| 34 | 1.4.3 | Testeo | 3d | 2012-07-31 | 2012-08-03 | 28, 30 | 0d |  |  |
| 35 | 1.5 | **Iteración 3** | 51.75d | 2012-08-03 | 2012-09-18 | 27 | 0d |  | Calendar 1 |
| 36 | 1.5.1 | Definicion de la interfaz de datos entre el motor y el postprocesamiento | 2d | 2012-08-03 | 2012-08-07 |  | 29d | 0d |  |
| 37 | 1.5.2 | Diseño de la interfaz gráfica de usuario para el postprocesamiento | 1d | 2012-08-07 | 2012-08-08 | 36 | 29d |  |  |
| 38 | 1.5.3 | **Desarrollo del motor de FEM (Parte 3)** | 5d | 2012-08-03 | 2012-08-10 |  | 24d |  |  |
| 39 | 1.5.3.1 | Almacenamiento del resultado del procesamiento bajo la interfaz definida | 5d | 2012-08-03 | 2012-08-10 |  | 24d |  |  |
| 40 | 1.5.4 | **Desarrollo de interfaz grafica de postprocesamiento (Parte 1)** | 29d | 2012-08-03 | 2012-09-13 |  | 0d |  |  |
| 41 | 1.5.4.1 | Creación de escenario 3D para carga de los resultados | 6d | 2012-08-03 | 2012-08-13 |  | 0d |  |  |
| 42 | 1.5.4.2 | Creación de la lista de los frames a visualizar | 2d | 2012-08-13 | 2012-08-15 | 41 | 0d |  |  |
| 43 | 1.5.4.3 | Cargar resultados de procesamiento | 14d | 2012-08-15 | 2012-09-04 | 42 | 0d |  |  |
| 44 | 1.5.4.4 | Visualizar los resultados frame por frame. | 7d | 2012-09-04 | 2012-09-13 | 43 | 0d |  |  |
| 45 | 1.5.5 | Testeo | 3d | 2012-09-13 | 2012-09-18 | 38, 40 | 0d |  |  |
| 46 | 1.6 | **Iteración 4** | 25.88d | 2012-09-18 | 2012-10-11 | 35 | 0d |  | Calendar 1 |
| 47 | 1.6.1 | **Desarrollo de interfaz gráfica de preprocesamiento (Parte 3)** | 9d | 2012-09-18 | 2012-10-01 |  | 3.75d |  |  |
| 48 | 1.6.1.1 | Agregar parametros adicionales | 9d | 2012-09-18 | 2012-10-01 |  | 3.75d | 0d |  |
| 49 | 1.6.2 | **Desarrollo de interfaz grafica de postprocesamiento (Parte 2)** | 14d | 2012-09-18 | 2012-10-08 |  | 0d |  |  |
| 50 | 1.6.2.1 | Visualizacion de los resultados en base a diferentes criterios (Presion, tension y desplazamiento) | 7d | 2012-09-18 | 2012-09-27 |  | 0d |  |  |
| 51 | 1.6.2.2 | Opcion para ver los resultados de forma continua y fluida | 7d | 2012-09-27 | 2012-10-08 | 50 | 0d |  |  |

Notes:
- 31: Permitir el controlar la camara de la visualizacion 3D con el mouse
- 32: Constraints, modelo rigido no deformable.
- 37: Incluye: / * Lista de frames de los resultados / * Visualizacion del modelo 3d / * Visualizacion de los resultados en base a diferentes criterios (Presion, tension y desplazamiento) / * Visualizar los resultados de forma continua y fluida

| ID | WBS | Task | Duration | Start | Finish | Predecessors | Total slack | Calendar |
| --- | --- | --- | --- | --- | --- | --- | --- | --- |
| 52 | 1.6.3 | **Desarrollo del motor FEM (Parte 4)** | 4.62d | 2012-10-01 | 2012-10-07 |  | 3.38d |  |
| 53 | 1.6.3.1 | Agregar los parametros adicionales al calculo del procesamiento | 7d | 2012-10-01 | 2012-10-07 | 48 | 4.25d | Calendar 1 |
| 54 | 1.6.4 | Testeo | 3d | 2012-10-08 | 2012-10-11 | 47, 49, 42 | 0d |  |
| 55 | 1.7 | **Iteracion 5** | 20.25d | 2012-10-11 | 2012-10-29 | 46 | 0d | Calendar 1 |
| 56 | 1.7.1 | Integracion | 5d | 2012-10-11 | 2012-10-18 |  | 0d |  |
| 57 | 1.7.2 | Creacion de modelos mas elaborados | 3d | 2012-10-11 | 2012-10-16 |  | 2d |  |
| 58 | 1.7.3 | Testeo final | 7d | 2012-10-18 | 2012-10-29 | 56, 57 | 0d |  |
| 59 | 1.8 | Cierre | 1d | 2012-10-29 | 2012-10-30 | 55 | 0d | Calendar 1 |
| 60 | 1.9 | Preparación de la presentación comercial | 2d | 2012-10-30 | 2012-10-31 | 59 | 0d | Calendar 1 |

Notes:
- 53: Masa extra al modelo. (en general o a algunas partes)
